# PMO-Plan de trabajo-Gestion del cambio GCP-V1-21May2014

Schedule from MS Project, 2014-05-26 to 2014-08-26.

## Calendars

- Estándar: Mon-Fri 09:00-13:00, 15:00-19:00; Sat-Sun off.

## Resources

| Resource |
| --- |
| EPP |

## Schedule

| ID | WBS | Task | Duration | Start | Finish | Predecessors | Total slack | Free slack | Constraint | Resources | Work |
| --- | --- | --- | --- | --- | --- | --- | --- | --- | --- | --- | --- |
| 1 | 1 | **Implementación de la Fabrica de Software** | 43d | 2014-05-26 | 2014-07-23 |  | 0d |  |  |  | 156h |
| 2 | 1.1 | Kick Off | 1d | 2014-05-26 | 2014-05-26 |  | 0d |  | start no earlier than 2014-05-26 | EPP | 8h |
| 3 | 1.2 | **Gestión del Cambio** | 24.5d | 2014-05-27 | 2014-06-30 | 2 | 0d |  |  |  | 148h |
| 4 | 1.2.1 | Conformación de equipo de transición | 1d | 2014-05-27 | 2014-05-27 |  | 0d |  |  | EPP | 8h |
| 5 | 1.2.2 | **Assessment de Aplicaciones y Procesos** | 5.5d | 2014-05-27 | 2014-06-03 |  | 0d |  |  |  | 44h |
| 6 | 1.2.2.1 | **Assessment de Aplicaciones** | 4.5d | 2014-05-28 | 2014-06-03 | 4 | 0d |  |  |  |  |
| 7 | 1.2.2.1.1 | Agencias (VA) | 0.5d | 2014-05-28 | 2014-05-28 |  | 0d |  |  |  |  |
| 8 | 1.2.2.1.2 | Agencias | 0.5d | 2014-05-28 | 2014-05-28 | 7 | 0d |  |  |  |  |
| 9 | 1.2.2.1.3 | Agentes | 0.5d | 2014-05-29 | 2014-05-29 | 8 | 0d |  |  |  |  |
| 10 | 1.2.2.1.4 | Intranet | 0.5d | 2014-05-29 | 2014-05-29 | 9 | 0d |  |  |  |  |
| 11 | 1.2.2.1.5 | Paginas Corporativas | 0.5d | 2014-05-30 | 2014-05-30 | 10 | 0d |  |  |  |  |
| 12 | 1.2.2.1.6 | Seguro Listo | 0.5d | 2014-05-30 | 2014-05-30 | 11 | 0d |  |  |  |  |
| 13 | 1.2.2.1.7 | Sir | 0.5d | 2014-06-02 | 2014-06-02 | 12 | 0d |  |  |  |  |
| 14 | 1.2.2.1.8 | WIMS live | 0.5d | 2014-06-02 | 2014-06-02 | 13 | 0d |  |  |  |  |
| 15 | 1.2.2.1.9 | WIMs Cliente/Servidor | 0.5d | 2014-06-03 | 2014-06-03 | 14 | 0d |  |  |  |  |
| 16 | 1.2.2.1.10 | Entrega de Fichas | 0.5d | 2014-05-28 | 2014-05-28 |  | 4d |  |  |  |  |
| 17 | 1.2.2.2 | **Assessment de Procesos** | 5.5d | 2014-05-27 | 2014-06-03 |  | 0d |  |  |  | 44h |
| 18 | 1.2.2.2.1 | Proceso de Solicitud | 1d | 2014-05-27 | 2014-05-27 |  | 0d |  |  | EPP | 8h |
| 19 | 1.2.2.2.2 | Proceso de construcción | 1d | 2014-05-28 | 2014-05-28 | 18 | 0d |  |  | EPP | 8h |
| 20 | 1.2.2.2.3 | Proceso de QA | 1d | 2014-05-29 | 2014-05-29 | 19 | 0d |  |  | EPP | 8h |
| 21 | 1.2.2.2.4 | Proceso de Liberación | 1d | 2014-05-30 | 2014-05-30 | 20 | 0d |  |  | EPP | 8h |
| 22 | 1.2.2.2.5 | Proceso de Control y Seguimiento | 1d | 2014-06-02 | 2014-06-02 | 21 | 0d |  |  | EPP | 8h |
| 23 | 1.2.2.2.6 | Entrega de Assessment de procesos | 0.5d | 2014-06-03 | 2014-06-03 | 22 | 0d |  |  | EPP | 4h |
| 24 | 1.2.3 | **Requerimientos de Arranque** | 7.5d | 2014-05-27 | 2014-06-05 |  | 3d |  |  |  | 32h |
| 25 | 1.2.3.1 | **•Personal Interno** | 2d | 2014-06-03 | 2014-06-05 | 5 | 3d |  |  |  | 8h |
| 26 | 1.2.3.1.1 | •Solicitudes de Acceso | 1d | 2014-06-03 | 2014-06-04 |  | 4d |  |  |  |  |
| 27 | 1.2.3.1.2 | •Creación de accesos a Aplicaciones | 1d | 2014-06-03 | 2014-06-04 |  | 3d | 0d |  |  |  |
| 28 | 1.2.3.1.3 | •Creación de accesos a Entornos | 1d | 2014-06-03 | 2014-06-04 |  | 3d | 0d |  | EPP | 8h |
| 29 | 1.2.3.1.4 | •Creación de accesos a Base de datos | 1d | 2014-06-04 | 2014-06-05 | 28, 27 | 3d |  |  |  |  |
| 30 | 1.2.3.1.5 | •Creación de accesos a dominios | 1d | 2014-06-04 | 2014-06-05 | 28, 27 | 3d |  |  |  |  |

| ID | WBS | Task | Duration | Start | Finish | Predecessors | Total slack | Free slack | Resources | Work |
| --- | --- | --- | --- | --- | --- | --- | --- | --- | --- | --- |
| 31 | 1.2.3.2 | **•Fabrica de software** | 1d | 2014-06-04 | 2014-06-05 | 27, 28 | 3d |  | EPP | 8h |
| 32 | 1.2.3.2.1 | •Solicitudes de VPN | 1d | 2014-06-04 | 2014-06-05 | 28, 27 | 3d |  |  |  |
| 33 | 1.2.3.2.2 | •Creación de accesos a Aplicaciones | 1d | 2014-06-04 | 2014-06-05 |  | 3d |  |  |  |
| 34 | 1.2.3.2.3 | •Creación de accesos a Entornos | 1d | 2014-06-04 | 2014-06-05 |  | 3d |  |  |  |
| 35 | 1.2.3.2.4 | Creación de accesos a Base de datos | 1d | 2014-06-04 | 2014-06-05 |  | 3d |  |  |  |
| 36 | 1.2.3.3 | **Identificación y adecuación de lugares de trabajo** | 1d | 2014-05-27 | 2014-05-27 |  | 9.5d |  |  | 16h |
| 37 | 1.2.3.3.1 | Adecuación de Lugar (mesas, sillas, acceso a red) | 1d | 2014-05-27 | 2014-05-27 |  | 9.5d |  |  |  |
| 38 | 1.2.3.3.2 | Solicitud de extenciones telefonicas | 1d | 2014-05-27 | 2014-05-27 |  | 9.5d |  | EPP | 8h |
| 39 | 1.2.3.3.3 | Validación de lugares de trabajo | 1d | 2014-05-27 | 2014-05-27 |  | 9.5d |  | EPP | 8h |
| 40 | 1.2.4 | **Transferencia de Conocimiento** | 16d | 2014-06-03 | 2014-06-25 |  | 0d |  |  | 48h |
| 41 | 1.2.4.1 | Asignación de recursos | 1d | 2014-06-03 | 2014-06-04 | 5 | 0d |  | EPP | 8h |
| 42 | 1.2.4.2 | Creación de temas y temarios | 4d | 2014-06-04 | 2014-06-10 | 41 | 0d |  | EPP | 32h |
| 43 | 1.2.4.3 | **Capacitación en aplicaciones** | 10d | 2014-06-10 | 2014-06-24 |  | 0d |  |  |  |
| 44 | 1.2.4.3.1 | Agencias (VA) | 10d | 2014-06-10 | 2014-06-24 | 42, 5, 24 | 0d |  |  |  |
| 45 | 1.2.4.3.2 | Agencias | 10d | 2014-06-10 | 2014-06-24 | 42, 5, 24 | 0d |  |  |  |
| 46 | 1.2.4.3.3 | Agentes | 10d | 2014-06-10 | 2014-06-24 | 42, 5, 24 | 0d |  |  |  |
| 47 | 1.2.4.3.4 | Intranet | 10d | 2014-06-10 | 2014-06-24 | 42, 5, 24 | 0d |  |  |  |
| 48 | 1.2.4.3.5 | Paginas Corporativas | 10d | 2014-06-10 | 2014-06-24 | 42, 5, 24 | 0d |  |  |  |
| 49 | 1.2.4.3.6 | Seguro Listo | 10d | 2014-06-10 | 2014-06-24 | 42, 5, 24 | 0d |  |  |  |
| 50 | 1.2.4.3.7 | Sir | 10d | 2014-06-10 | 2014-06-24 | 42, 5, 24 | 0d |  |  |  |
| 51 | 1.2.4.3.8 | WIMS live | 10d | 2014-06-10 | 2014-06-24 | 42, 5, 24 | 0d |  |  |  |
| 52 | 1.2.4.3.9 | WIMs Cliente/Servidor | 10d | 2014-06-10 | 2014-06-24 | 42, 5, 24 | 0d |  |  |  |
| 53 | 1.2.4.4 | Validación de capacitación | 1d | 2014-06-24 | 2014-06-25 | 52 | 41d | 0d | EPP | 8h |
| 54 | 1.2.5 | **Entrega /Recepción** | 3d | 2014-06-25 | 2014-06-30 |  | 41d |  |  | 16h |
| 55 | 1.2.5.1 | Entrega recepción por aplicación | 1d | 2014-06-25 | 2014-06-26 | 53 | 41d | 0d |  |  |
| 56 | 1.2.5.2 | Plan de accion de incidentes y mantenimientos al momento de la entrega | 1d | 2014-06-26 | 2014-06-27 | 55 | 41d | 0d | EPP | 8h |
| 57 | 1.2.5.3 | Cierre de proyecto de gestión | 1d | 2014-06-27 | 2014-06-30 | 56 | 41d |  | EPP | 8h |

| ID | WBS | Task | Duration | Start | Finish | Predecessors | Total slack | Free slack |
| --- | --- | --- | --- | --- | --- | --- | --- | --- |
| 58 | 1.3 | **Modelo de Relación de Trabajo** | 41d | 2014-05-28 | 2014-07-23 |  | 23.5d |  |
| 59 | 1.3.1 | **Definición del servicio** | 3d | 2014-05-28 | 2014-05-30 | 4 | 23.5d | 0d |
| 60 | 1.3.1.1 | Documentación del Servicio | 2d | 2014-05-28 | 2014-05-29 |  | 23.5d | 0d |
| 61 | 1.3.1.2 | Validación de la definición del servicio | 1d | 2014-05-30 | 2014-05-30 | 60 | 23.5d |  |
| 62 | 1.3.2 | **Ámbito del Servicio** | 5d | 2014-06-02 | 2014-06-06 | 59 | 23.5d | 0d |
| 63 | 1.3.2.1 | Documentación de Aplicaciones a dar servicio | 2d | 2014-06-02 | 2014-06-03 |  | 23.5d | 0d |
| 64 | 1.3.2.2 | Documentación de horarios de servicio | 1d | 2014-06-04 | 2014-06-04 | 63 | 23.5d | 0d |
| 65 | 1.3.2.3 | Documentación de caracteristicas especiales de servicio | 1d | 2014-06-05 | 2014-06-05 | 64 | 23.5d | 0d |
| 66 | 1.3.2.4 | Validación del Ambito del servicio | 1d | 2014-06-06 | 2014-06-06 | 65 | 23.5d |  |
| 67 | 1.3.3 | **Gestión de Oferta de Software** | 2d | 2014-06-09 | 2014-06-10 | 62 | 23.5d | 0d |
| 68 | 1.3.3.1 | Generación de procesos de oferta | 2d | 2014-06-09 | 2014-06-10 |  | 23.5d |  |
| 69 | 1.3.3.2 | Validación de procesos de oferta de software | 2d | 2014-06-09 | 2014-06-10 |  | 23.5d |  |
| 70 | 1.3.4 | **Gestión de Trabajo** | 3d | 2014-06-11 | 2014-06-13 | 67 | 23.5d | 0d |
| 71 | 1.3.4.1 | Generación de procesos de gestión de trabajo | 3d | 2014-06-11 | 2014-06-13 |  | 23.5d |  |
| 72 | 1.3.4.2 | Validación de procesos de gestión de trabajo | 1d | 2014-06-11 | 2014-06-11 |  | 25.5d |  |
| 73 | 1.3.5 | **Gestión de Recursos** | 5d | 2014-06-16 | 2014-06-20 | 70 | 23.5d | 0d |
| 74 | 1.3.5.1 | Definición de parametros de medición y control de recursos | 2d | 2014-06-16 | 2014-06-17 |  | 23.5d | 0d |
| 75 | 1.3.5.2 | Definición de reportes de aprovechamiento de recursos humanos | 2d | 2014-06-18 | 2014-06-19 | 74 | 23.5d | 0d |
| 76 | 1.3.5.3 | Validación de Gestión de recursos | 1d | 2014-06-20 | 2014-06-20 | 75 | 23.5d |  |
| 77 | 1.3.6 | **Estructura Organizativa** | 3d | 2014-06-23 | 2014-06-25 | 73 | 23.5d | 0d |
| 78 | 1.3.6.1 | Definición de estructura de Organización | 1d | 2014-06-23 | 2014-06-23 |  | 23.5d | 0d |
| 79 | 1.3.6.2 | Definición de procesos de comunicacón y escalamiento | 1d | 2014-06-24 | 2014-06-24 | 78 | 23.5d | 0d |
| 80 | 1.3.6.3 | Validación de Estructura Organizativa | 1d | 2014-06-25 | 2014-06-25 | 79 | 23.5d |  |
| 81 | 1.3.7 | **Tarificación** | 7d | 2014-06-26 | 2014-07-04 | 77 | 23.5d | 0d |
| 82 | 1.3.7.1 | Definición de parametros de tarificación | 2d | 2014-06-26 | 2014-06-27 |  | 23.5d | 0d |
| 83 | 1.3.7.2 | Construción y modificaciones al tarificador | 2d | 2014-06-30 | 2014-07-01 | 82 | 23.5d | 0d |
| 84 | 1.3.7.3 | Pruebas tarificador | 2d | 2014-07-02 | 2014-07-03 | 83 | 23.5d | 0d |
| 85 | 1.3.7.4 | Validación y aceptación del tarificador | 1d | 2014-07-04 | 2014-07-04 | 84 | 23.5d |  |

| ID | WBS | Task | Duration | Start | Finish | Predecessors | Total slack | Free slack |
| --- | --- | --- | --- | --- | --- | --- | --- | --- |
| 86 | 1.3.8 | **ANS** | 13d | 2014-07-07 | 2014-07-23 | 81 | 23.5d |  |
| 87 | 1.3.8.1 | Definición de indicadores de Gestión de Oferta de Software | 2d | 2014-07-07 | 2014-07-08 |  | 26.5d | 0d |
| 88 | 1.3.8.2 | Definición de indicadores de Gestión de Trabajo | 2d | 2014-07-09 | 2014-07-10 | 87 | 26.5d | 0d |
| 89 | 1.3.8.3 | Definición de indicadores de Gestión de Recursos | 2d | 2014-07-11 | 2014-07-14 | 88 | 26.5d | 0d |
| 90 | 1.3.8.4 | Definición de indicadores de Servicio | 2d | 2014-07-15 | 2014-07-16 | 89 | 26.5d | 0d |
| 91 | 1.3.8.5 | Definición de indicadores de servicio de incidentes | 2d | 2014-07-17 | 2014-07-18 | 90 | 26.5d |  |
| 92 | 1.3.8.6 | Definición de indicadores de servicio de Mantenimiento | 2d | 2014-07-07 | 2014-07-08 | 17 | 23.5d | 0d |
| 93 | 1.3.8.7 | Validaciín general de indicadores | 1d | 2014-07-09 | 2014-07-09 | 92 | 23.5d | 0d |
| 94 | 1.3.8.8 | Implementación de indicadores | 10d | 2014-07-10 | 2014-07-23 | 93 | 23.5d |  |
| 95 | 1.3.9 | **Cuadros de Mando** | 3d | 2014-07-10 | 2014-07-14 | 93 | 27.5d | 0d |
| 96 | 1.3.9.1 | Diseño de cuatros de mando operativos | 2d | 2014-07-10 | 2014-07-11 |  | 27.5d | 0d |
| 97 | 1.3.9.2 | Validación de cuadros de mando | 1d | 2014-07-14 | 2014-07-14 | 96 | 27.5d |  |
| 98 | 1.3.10 | **Mejora Continua** | 3d | 2014-07-15 | 2014-07-17 | 95 | 27.5d |  |
| 99 | 1.3.10.1 | Definicion de procesos de mejora continua | 1d | 2014-07-15 | 2014-07-15 |  | 27.5d | 0d |
| 100 | 1.3.10.2 | Definicion de indicadores de mejora | 1d | 2014-07-16 | 2014-07-16 | 99 | 27.5d | 0d |
| 101 | 1.3.10.3 | Validación de procesos e indicadores de mejora continua | 1d | 2014-07-17 | 2014-07-17 | 100 | 27.5d |  |
| 102 | 2 | **Adopción de procesos** | 45d | 2014-06-24 | 2014-08-26 |  | 0d |  |
| 103 | 2.1 | Implementación de Gestión de trabajo | 15d | 2014-06-24 | 2014-07-15 | 43 | 0d |  |
| 104 | 2.2 | Gestión de Trabajo (Procesos de inicio) | 15d | 2014-07-15 | 2014-08-05 | 103 | 0d |  |
| 105 | 2.3 | Gestión de trabajo (Mejora continua) | 15d | 2014-08-05 | 2014-08-26 | 104 | 0d |  |
